# 东科 Vth -1V

Schedule from a web Gantt chart, 2025-09-29 to 2025-10-13.
Saturdays and Sundays are off

## Schedule

| ID | WBS | Task | Duration | Start | Finish | Complete |
| --- | --- | --- | --- | --- | --- | --- |
| 2 | 1 | kick-off | 1d | 2025-09-29 | 2025-09-29 | 100% |
| 3 | 2 | 项目立项会议 | 1d | 2025-10-13 | 2025-10-13 |  |
